# trWorkbench 1.0

Schedule from MS Project, 2008-03-19 to 2008-05-20, A marks actual dates.
NCI

## Calendars

- Standard: Mon-Fri 08:00-12:00, 13:00-17:00; Sat-Sun off.

## Resources

| Resource |
| --- |
| Subha Madhavan |
| Eric Tavela |
| TJ Andrews |
| Michael Holck |
| Shine Jacob |

## Schedule

| ID | WBS | Task | Duration | Start | Finish | Predecessors | Complete | Remaining | Total slack | Free slack | Constraint | Resources | Work | Actual work |
| --- | --- | --- | --- | --- | --- | --- | --- | --- | --- | --- | --- | --- | --- | --- |
| 1 | 1 | **TrWorkbench 1.0** | 45d? | 2008-03-19 A | 2008-05-20 |  | 1% | 44.33d? | 0d |  |  |  | 2362.67h | 32h |
| 2 | 1.1 | **Inception phase** | 23d? | 2008-03-19 A | 2008-04-18 |  | 5% | 21.76d? | 20d |  |  |  | 752h | 32h |
| 3 | 1.1.1 | **Inception Iteration 1** | 23d? | 2008-03-19 A | 2008-04-18 |  | 5% | 21.76d? | 20d |  |  |  | 752h | 32h |
| 4 | 1.1.1.1 | **Requirements** | 16d? | 2008-03-19 A | 2008-04-09 |  | 29% | 11.43d? | 27d |  |  |  | 112h | 32h |
| 5 | 1.1.1.1.1 | Develop Vision | 2d? | 2008-03-19 A | 2008-03-20 A |  | 100% |  |  |  |  | Subha Madhavan | 16h | 16h |
| 6 | 1.1.1.1.2 | Find Actors and Use Cases | 2d | 2008-03-19 A | 2008-03-20 A |  | 100% |  |  |  |  | Eric Tavela | 16h | 16h |
| 7 | 1.1.1.1.3 | Detail a Use Case (multiple) | 5d | 2008-03-27 | 2008-04-02 | 6 |  |  | 27d | 0d | finish no earlier than 2008-04-02 | Eric Tavela | 40h |  |
| 8 | 1.1.1.1.4 | Finalize Use Case Model | 5d | 2008-04-03 | 2008-04-09 | 7 |  |  | 8d |  | start no earlier than 2008-04-02 | Eric Tavela | 40h |  |
| 9 | 1.1.1.2 | **Analysis and Design** | 18d | 2008-03-26 | 2008-04-18 |  |  |  | 20d |  |  |  | 432h |  |
| 10 | 1.1.1.2.1 | Architectural Analysis | 4d | 2008-03-26 | 2008-03-31 |  |  |  | 15d |  | start no earlier than 2008-03-26 | Eric Tavela [50%]; Michael Holck [50%] | 24h |  |
| 11 | 1.1.1.2.2 | **Construct Architectural Proof of Concept** | 17d | 2008-03-27 | 2008-04-18 |  |  |  | 20d |  |  |  | 408h |  |
| 12 | 1.1.1.2.2.1 | Investigate clinical data representation approaches | 12d | 2008-03-27 | 2008-04-11 |  |  |  | 1d | 0d | start no earlier than 2008-03-27 | Michael Holck | 96h |  |
| 13 | 1.1.1.2.2.2 | Analyse genomic data storage and retrieval | 8d | 2008-04-02 | 2008-04-11 |  |  |  | 6d |  | finish no earlier than 2008-04-11 | Eric Tavela; Michael Holck; TJ Andrews | 192h |  |
| 14 | 1.1.1.2.2.3 | Define integrated object model (clinical, genomic, imaging) | 5d | 2008-04-14 | 2008-04-18 | 12 |  |  | 1d |  |  | Eric Tavela; Michael Holck; TJ Andrews | 120h |  |
| 15 | 1.1.1.3 | **UI Analysis** | 7d? | 2008-03-27 | 2008-04-04 |  |  |  | 30d |  |  |  | 56h |  |
| 16 | 1.1.1.3.1 | Analysis of existing caIntegrator UI and Analysis tools (KM Plots, GenePattern etc) | 7d? | 2008-03-27 | 2008-04-04 |  |  |  | 11d |  | finish no earlier than 2008-04-04 | TJ Andrews | 56h |  |
| 17 | 1.1.1.4 | **Project Management** | 23d? | 2008-03-19 | 2008-04-18 |  |  |  | 20d |  |  |  | 152h |  |
| 18 | 1.1.1.4.1 | Develop Iteration Plan: I1 | 3d | 2008-03-19 | 2008-03-21 |  |  |  | 21d |  |  | Shine Jacob | 24h |  |
| 19 | 1.1.1.4.2 | Identify and Assess Risks | 10d | 2008-03-24 | 2008-04-04 |  |  |  | 11d |  | finish no earlier than 2008-04-04 | Shine Jacob | 80h |  |
| 20 | 1.1.1.4.3 | Develop Iteration Plan: E1 | 5d? | 2008-04-14 | 2008-04-18 |  |  |  | 1d |  | finish no earlier than 2008-04-18 | Shine Jacob | 40h |  |
| 21 | 1.1.1.4.4 | Assess Iteration | 1d? | 2008-04-18 | 2008-04-18 |  |  |  | 1d |  | start no earlier than 2008-04-18 | Shine Jacob | 8h |  |
| 22 | 1.1.1.5 | **Environment** | 5d? | 2008-04-14 | 2008-04-18 |  |  |  | 20d |  |  |  |  |  |
| 23 | 1.1.1.5.1 | Setup Tools | 5d? | 2008-04-14 | 2008-04-18 |  |  |  | 1d |  | finish no earlier than 2008-04-18 |  |  |  |
| 24 | 1.2 | Inception Complete | 1d? | 2008-04-18 | 2008-04-18 |  |  |  | 2d | 0d | finish no earlier than 2008-04-18 |  |  |  |

Notes:
- 5: - Already have Subha's Vision content / - Record Features (in GForge) / - Record non-functional requirements at this level (will be in Supplementary Specification in Elaboration)
- 10: Develop Architecture Overview / Survey Available Assets / Define the High-Level Organization of Subsystems / Identify Key Abstractions / Develop Deployment Overview
- 19: - Ongoing
- 23: GForge / Subversion / Enterprise Architect / Choose IDE approach

| ID | WBS | Task | Duration | Start | Finish | Predecessors | Total slack | Free slack | Constraint | Resources | Work |
| --- | --- | --- | --- | --- | --- | --- | --- | --- | --- | --- | --- |
| 25 | 1.3 | **Elaboration Phase** | 22d? | 2008-04-21 | 2008-05-20 | 24 | 0d |  |  |  | 1610.67h |
| 26 | 1.3.1 | **Elaboration - Iteration 1** | 21d? | 2008-04-21 | 2008-05-19 |  | 1d |  |  |  | 1610.67h |
| 27 | 1.3.1.1 | **Project Management** | 20d? | 2008-04-21 | 2008-05-16 |  | 2d |  |  |  | 328h |
| 28 | 1.3.1.1.1 | Iteration Plan | 4d? | 2008-04-28 | 2008-05-01 |  | 11d |  | start no earlier than 2008-04-28 | Shine Jacob | 32h |
| 29 | 1.3.1.1.2 | Risk Management | 17d? | 2008-04-24 | 2008-05-16 |  | 2d |  | start no earlier than 2008-04-24 | Shine Jacob | 136h |
| 30 | 1.3.1.1.3 | Manage communication (listserv, skype etc) | 20d? | 2008-04-21 | 2008-05-16 |  | 2d |  | finish no earlier than 2008-05-16 | Shine Jacob | 160h |
| 31 | 1.3.1.2 | **Requirements** | 8d? | 2008-04-28 | 2008-05-07 |  | 7d |  |  |  | 280h |
| 32 | 1.3.1.2.1 | **Revise Inception Use Cases** | 3d? | 2008-04-28 | 2008-04-30 |  | 12d |  |  |  | 24h |
| 33 | 1.3.1.2.1.1 | Gene Expression | 3d? | 2008-04-28 | 2008-04-30 |  | 12d |  | start no earlier than 2008-04-28 | Eric Tavela | 24h |
| 34 | 1.3.1.2.2 | **Elaboration Use Case definition** | 8d? | 2008-04-28 | 2008-05-07 |  | 7d |  |  |  | 256h |
| 35 | 1.3.1.2.2.1 | Imaging | 8d? | 2008-04-28 | 2008-05-07 |  | 7d |  | finish no earlier than 2008-05-07 | Eric Tavela | 64h |
| 36 | 1.3.1.2.2.2 | Methylation data | 8d? | 2008-04-28 | 2008-05-07 |  | 7d |  | start no earlier than 2008-04-28 | Eric Tavela | 64h |
| 37 | 1.3.1.2.2.3 | Update study | 8d? | 2008-04-28 | 2008-05-07 |  | 7d |  | start no earlier than 2008-04-28 | Eric Tavela | 64h |
| 38 | 1.3.1.2.2.4 | Security requirements | 8d? | 2008-04-28 | 2008-05-07 |  | 7d |  | start no earlier than 2008-04-28 | Eric Tavela | 64h |
| 39 | 1.3.1.3 | **Analysis and Design** | 10d? | 2008-04-21 | 2008-05-02 |  | 2d | 0d |  |  | 570.67h |
| 40 | 1.3.1.3.1 | Identify subsystems | 10d? | 2008-04-21 | 2008-05-02 |  | 2d |  | finish no earlier than 2008-05-02 | Michael Holck | 80h |
| 41 | 1.3.1.3.2 | Identify risk characteristics | 8d? | 2008-04-21 | 2008-04-30 |  | 2d |  | start no earlier than 2008-04-21 | Michael Holck | 64h |
| 42 | 1.3.1.3.3 | **Use-case design** | 10d | 2008-04-21 | 2008-05-02 |  | 2d |  |  |  | 266.67h |
| 43 | 1.3.1.3.3.1 | manage queries (create and execute genomic with clinical) | 10d | 2008-04-21 | 2008-05-02 |  | 2d |  | finish no earlier than 2008-05-02 | Michael Holck; Eric Tavela | 106.67h |
| 44 | 1.3.1.3.3.2 | Perform Analysis (genepattern) | 10d | 2008-04-21 | 2008-05-02 |  | 2d |  |  | Michael Holck; TJ Andrews | 160h |
| 45 | 1.3.1.3.4 | Object Model | 10d | 2008-04-21 | 2008-05-02 |  | 2d |  |  | Michael Holck | 80h |
| 46 | 1.3.1.3.5 | Implementation model | 10d | 2008-04-21 | 2008-05-02 |  | 2d |  |  | Michael Holck | 80h |
| 47 | 1.3.1.4 | **Implementation** | 15d? | 2008-04-28 | 2008-05-16 |  | 2d |  |  |  | 280h |
| 48 | 1.3.1.4.1 | HTP data management | 10d | 2008-05-05 | 2008-05-16 | 39 | 2d |  |  | Eric Tavela | 80h |
| 49 | 1.3.1.4.2 | Query | 10d | 2008-05-05 | 2008-05-16 | 39 | 2d |  |  | Eric Tavela; TJ Andrews | 160h |
| 50 | 1.3.1.4.3 | caCore Code Generation | 5d? | 2008-04-28 | 2008-05-02 |  | 10d |  | start no earlier than 2008-04-28 | Eric Tavela | 40h |
| 51 | 1.3.1.4.4 | JUnit testing | 3d | 2008-05-14 | 2008-05-16 | 39 | 2d |  | start no earlier than 2008-05-14 |  |  |

| ID | WBS | Task | Duration | Start | Finish | Predecessors | Total slack | Constraint | Resources | Work |
| --- | --- | --- | --- | --- | --- | --- | --- | --- | --- | --- |
| 52 | 1.3.1.5 | **Test** | 3d | 2008-05-14 | 2008-05-16 |  | 0d |  |  |  |
| 53 | 1.3.1.5.1 | Selenium testing framework(stretch) | 3d | 2008-05-14 | 2008-05-16 | 39 | 0d | finish no earlier than 2008-05-16 |  |  |
| 54 | 1.3.1.6 | **Environment** | 4d | 2008-04-28 | 2008-05-01 |  | 11d |  |  | 48h |
| 55 | 1.3.1.6.1 | Eclipse configuration | 2d | 2008-04-29 | 2008-04-30 |  | 12d | finish no earlier than 2008-04-30 | Eric Tavela | 16h |
| 56 | 1.3.1.6.2 | CI environment | 2d | 2008-04-28 | 2008-04-29 |  | 13d | finish no earlier than 2008-04-29 | Eric Tavela | 16h |
| 57 | 1.3.1.6.3 | ANT | 2d | 2008-04-30 | 2008-05-01 |  | 11d | finish no earlier than 2008-05-01 | Eric Tavela | 16h |
| 58 | 1.3.1.7 | **Configuration and Change Management** | 1d? | 2008-05-16 | 2008-05-16 |  | 2d |  |  | 16h |
| 59 | 1.3.1.7.1 | Set up defect tracker | 1d? | 2008-05-16 | 2008-05-16 |  | 2d | finish no earlier than 2008-05-16 | Eric Tavela | 8h |
| 60 | 1.3.1.7.2 | Set up feature request tracker | 1d? | 2008-05-16 | 2008-05-16 |  | 2d | finish no earlier than 2008-05-16 | Eric Tavela | 8h |
| 61 | 1.3.1.8 | **Deployment** | 8d | 2008-04-21 | 2008-04-30 |  | 12d |  |  | 88h |
| 62 | 1.3.1.8.1 | Get DEV environment | 8d | 2008-04-21 | 2008-04-30 |  | 12d | finish no earlier than 2008-04-30 | Shine Jacob | 64h |
| 63 | 1.3.1.8.2 | ARC document (Draft) | 3d | 2008-04-28 | 2008-04-30 |  | 12d | start no earlier than 2008-04-28 | Shine Jacob | 24h |
| 64 | 1.3.1.9 | Elaboration 1 Complete | 1d? | 2008-05-19 | 2008-05-19 | 52 | 0d |  |  |  |
| 65 | 1.3.2 | **Elaboration - Iteration 2** | 1d? | 2008-05-20 | 2008-05-20 | 64 | 0d |  |  |  |
| 66 | 1.3.2.1 | Project Management | 1d? | 2008-05-20 | 2008-05-20 |  | 0d |  |  |  |
| 67 | 1.3.2.2 | Requirements | 1d? | 2008-05-20 | 2008-05-20 |  | 0d |  |  |  |
| 68 | 1.3.2.3 | Analysis and Design | 1d? | 2008-05-20 | 2008-05-20 |  | 0d |  |  |  |
| 69 | 1.3.2.4 | Implementation | 1d? | 2008-05-20 | 2008-05-20 |  | 0d |  |  |  |
| 70 | 1.3.2.5 | Test | 1d? | 2008-05-20 | 2008-05-20 |  | 0d |  |  |  |
| 71 | 1.3.2.6 | Environment | 1d? | 2008-05-20 | 2008-05-20 |  | 0d |  |  |  |
| 72 | 1.3.2.7 | Configuration and Change Management | 1d? | 2008-05-20 | 2008-05-20 |  | 0d |  |  |  |
| 73 | 1.3.2.8 | Elaboration 2 Complete | 1d? | 2008-05-20 | 2008-05-20 |  | 0d |  |  |  |
